# Лаб_раб_1

Schedule from MS Project, 2022-03-01 to 2022-08-15, status date 2022-05-13, costs in ₽, A marks actual dates.
Команда разработчиков из 16 человек занимается созданием карты города на основе собственного модуля отображения. Проект должен быть завершен в течение 6 месяцев. Бюджет проекта: 50 000 рублей

## Calendars

- Стандартный: Mon-Fri 09:00-13:00, 14:00-18:00; Sat-Sun off. Exceptions (off unless hours are given): 2022-03-05 09:00-13:00, 14:00-17:00 (Рабочий день), 2022-03-07 to 2022-03-08 (7-8 марта - выходные), 2022-05-02 to 2022-05-03 (2-3 мая - выходные), 2022-05-09 to 2022-05-10 (9-10 мая выходные), 2022-06-13 (13 июня - выходной).

## Resources

| Resource | Group | Rate | Cost per use |
| --- | --- | --- | --- |
| Ведущий программист | Программирование | 10 | 100 |
| Программист#1 | Программирование | 7 | 50 |
| Программист#2 | Программирование | 7 | 50 |
| Программист#3 | Программирование | 7 | 50 |
| Программист#4 | Программирование | 7 | 50 |
| Системный аналитик | Анализ | 20 | 300 |
| Художник-дизайнер | Дизайн | 8 | 70 |
| Технический писатель | Документация | 5 | 20 |
| Web-дизайнер | Internet | 7 | 50 |
| 3D аниматор | Дизайн | 8 | 70 |
| Мультимедиа-корреспондент | М-медиа | 3 | 20 |
| Наборщик данных#1 | Ввод данных | 2 | 10 |
| Наборщик данных#2 | Ввод данных | 2 | 10 |
| Наборщик данных#3 | Ввод данных | 2 | 10 |
| Наборщик данных#4 | Ввод данных | 2 | 10 |
| Наборщик данных#5 | Ввод данных | 2 | 10 |
| Сервер |  | 2 |  |
| Спец. ПО |  |  |  |

## Schedule

| ID | WBS | Task | Type | Duration | Start | Finish | Predecessors | Complete | Remaining | Baseline start | Baseline finish | Baseline duration | Total slack | Free slack | Resources | Work | Actual work | Cost | Baseline cost | Actual cost |
| --- | --- | --- | --- | --- | --- | --- | --- | --- | --- | --- | --- | --- | --- | --- | --- | --- | --- | --- | --- | --- |
| 1 | 1 | Начало проекта | milestone | 0w | 2022-03-01 09:00 A | 2022-03-01 09:00 A |  | 100% |  | 2022-03-01 09:00 | 2022-03-01 09:00 | 0w |  |  |  |  |  |  |  |  |
| 2 | 2 | **Создание интерфейса** |  | 88.14d | 2022-03-01 09:00 A | 2022-07-11 11:07 | 1 | 84% | 13.92d | 2022-03-01 09:00 | 2022-07-01 11:31 | 82.19d | 0d |  |  | 500h | 320h | 5,306 | 5,180 | 3,610 |
| 3 | 2.1 | **Разработка дизайна интерфейса** |  | 29.12d | 2022-03-01 09:00 A | 2022-04-12 11:00 A |  | 100% |  | 2022-03-01 09:00 | 2022-04-06 16:00 | 25.62d |  |  |  | 320h | 320h | 2,770 | 2,770 | 2,770 |
| 4 | 2.1.1 | Разработка 2D графических элементов |  | 3w | 2022-03-01 09:00 A | 2022-03-23 13:00 A |  | 100% |  | 2022-03-01 09:00 | 2022-03-23 13:00 | 3w |  |  | Художник-дизайнер | 120h | 120h | 1,030 | 1,030 | 1,030 |
| 5 | 2.1.2 | Разработка 3D графических элементов |  | 2w | 2022-03-01 09:00 A | 2022-03-16 12:00 A | 4SS | 100% |  | 2022-03-01 09:00 | 2022-03-16 12:00 | 2w |  |  | 3D аниматор | 80h | 80h | 710 | 710 | 710 |
| 6 | 2.1.3 | Создание заставки |  | 3w | 2022-03-22 09:00 A | 2022-04-12 11:00 A | 5 | 100% |  | 2022-03-16 14:00 | 2022-04-06 16:00 | 3w |  |  | 3D аниматор | 120h | 120h | 1,030 | 1,030 | 1,030 |
| 7 | 2.2 | Программирование интерфейса |  | 1.5w | 2022-06-29 16:07 | 2022-07-11 11:07 | 3, 12 |  |  | 2022-06-21 16:31 | 2022-07-01 11:31 | 1.5w | 0d |  | Программист#3; Программист#2; Программист#4 | 180h |  | 1,536 | 1,410 |  |
| 8 | 3 | **Построение базы объектов** |  | 85.64d | 2022-03-23 15:00 A | 2022-07-28 11:08 |  | 39% | 52.48d | 2022-03-23 15:00 | 2022-07-27 16:00 | 85.12d | 12.68d |  | Сервер | 5764.15h | 1808.08h | 15,565.5 | 15,580 | 7,229.9 |
| 9 | 3.1 | Анализ и построение структуры базы объектов |  | 2w | 2022-03-23 15:00 A | 2022-04-06 16:00 A |  | 100% |  | 2022-03-23 15:00 | 2022-04-06 16:00 | 2w |  |  | Системный аналитик | 80h | 80h | 1,900 | 1,900 | 1,900 |
| 10 | 3.2 | Программирование средств обработки базы объектов |  | 3.06w | 2022-04-06 17:45 A | 2022-04-28 11:08 A | 9 | 100% |  | 2022-04-06 16:00 | 2022-04-27 16:00 | 3w |  |  | Программист#4; Программист#3; Программист#2 | 240h | 240h | 1,986.62 | 1,780 | 1,986.62 |
| 11 | 3.3 | Наполнение базы объектов |  | 12w | 2022-04-28 11:08 A | 2022-07-28 11:08 | 10 | 13% | 10.45w | 2022-04-27 16:00 | 2022-07-27 16:00 | 12w | 12.68d |  | Наборщик данных#1; Наборщик данных#2; Наборщик данных#3; Наборщик данных#4; Наборщик данных#5 | 2400h | 309.27h | 4,850 | 4,850 | 668.53 |
| 12 | 4 | **Создание ядра GIS** |  | 80.64d | 2022-03-01 09:00 A | 2022-06-29 16:07 |  | 61% | 31.82d | 2022-03-01 09:00 | 2022-06-21 16:31 | 74.69d | 0d |  |  | 1908.61h | 1031.22h | 19,945.78 | 18,389.14 | 12,398.26 |
| 13 | 4.1 | Анализ и проектирование ядра |  | 3.05w | 2022-03-01 09:00 A | 2022-03-23 13:00 A |  | 100% |  | 2022-03-01 09:00 | 2022-03-23 13:00 | 3.05w |  |  | Ведущий программист; Системный аналитик | 240h | 240h | 4,000 | 4,000 | 4,000 |
| 14 | 4.2 | Создание модели ядра |  | 3.09w | 2022-03-23 14:00 A | 2022-04-13 17:33 A | 13 | 100% |  | 2022-03-23 14:00 | 2022-04-15 12:32 | 3.39w |  |  | Ведущий программист; Программист#1; Программист#2; Программист#3; Программист#4 | 400h | 400h | 3,350.73 | 3,396.69 | 3,350.73 |
| 15 | 4.3 | Тестирование модели ядра |  | 0.55w | 2022-04-13 17:33 A | 2022-04-18 15:22 A | 14 | 100% |  | 2022-04-15 12:32 | 2022-04-19 17:32 | 0.5w |  |  | Программист#2; Спец. ПО; Программист#3 | 40h | 40h | 1,208 | 380 | 1,208 |
| 16 | 4.4 | Создание рабочей версии ядра |  | 9.42w | 2022-04-18 15:22 A | 2022-06-29 16:07 | 15 | 33% | 6.35w | 2022-04-19 17:32 | 2022-06-21 16:31 | 7.97w | 0d |  | Ведущий программист; Программист#2; Программист#3; Программист#4 | 1228.61h | 351.22h | 10,387.05 | 9,612.44 | 3,229.54 |
| 17 | 5 | Создание мультимедиа - наполения |  | 6w | 2022-04-12 11:00 A | 2022-05-30 18:00 | 3 | 64% | 2.15w | 2022-04-06 16:00 | 2022-05-25 13:00 | 6w | 53.95d | 51.7d | Мультимедиа-корреспондент | 240h | 154h | 803 | 740 | 519.2 |
| 18 | 6 | Создание справочной системы |  | 2w | 2022-07-20 15:07 | 2022-08-03 16:07 | 7 |  |  | 2022-07-12 15:31 | 2022-07-26 16:31 | 2w | 8.19d | 13.19d | Технический писатель | 80h |  | 420 | 420 |  |
| 19 | 7 | **Создание руководства пользователя** |  | 17.25d | 2022-06-27 11:07 | 2022-07-20 14:07 | 7FS-10d |  |  | 2022-06-17 11:31 | 2022-07-12 14:31 | 17.25d | 0d |  |  | 160h |  | 1,010 | 1,010 |  |
| 20 | 7.1 | Разработка дизайна руководства |  | 1w | 2022-06-27 11:07 | 2022-07-04 12:07 |  |  |  | 2022-06-17 11:31 | 2022-06-24 11:31 | 1w | 0d |  | Художник-дизайнер | 40h |  | 390 | 390 |  |
| 21 | 7.2 | Написание руководства пользователя |  | 3w | 2022-06-29 11:07 | 2022-07-20 14:07 | 20SS+2d |  |  | 2022-06-21 11:31 | 2022-07-12 14:31 | 3w | 0d |  | Технический писатель | 120h |  | 620 | 620 |  |
| 22 | 8 | **Создание web-сайта и поддержка** |  | 23.5d | 2022-06-29 11:07 | 2022-08-01 16:07 |  |  |  | 2022-06-21 11:31 | 2022-07-22 15:31 | 23.38d | 0d |  |  | 248h |  | 2,106 | 2,106 |  |
| 23 | 8.1 | Разработка структуры сайта |  | 1d | 2022-06-29 11:07 | 2022-06-30 11:07 | 21SS |  |  | 2022-06-21 11:31 | 2022-06-22 11:31 | 1d | 0d |  | Web-дизайнер | 8h |  | 106 | 106 |  |
| 24 | 8.2 | Разработка дизайна сайта |  | 1.45w | 2022-06-30 11:07 | 2022-07-11 14:07 | 23 |  |  | 2022-06-22 11:31 | 2022-07-01 12:31 | 1.43w | 0d |  | Web-дизайнер; 3D аниматор; Художник-дизайнер | 120h |  | 1,110 | 1,110 |  |
| 25 | 8.3 | Наполение сайта |  | 3w | 2022-07-11 14:07 | 2022-08-01 16:07 | 24 |  |  | 2022-07-01 12:31 | 2022-07-22 15:31 | 3w | 0d |  | Web-дизайнер | 120h |  | 890 | 890 |  |
| 26 | 9 | Тестирование сайта |  | 3.04w | 2022-07-25 16:07 | 2022-08-15 17:36 | 22FS-1w |  |  | 2022-07-15 15:31 | 2022-08-02 16:57 | 2.44w | 0d |  | Ведущий программист; Программист#2; Программист#3; Программист#4 | 480h |  | 4,218.6 | 3,945.15 |  |
| 27 | 10 | Сдача сайта в эксплуатацию | milestone | 0w | 2022-08-15 17:36 | 2022-08-15 17:36 | 26 |  |  | 2022-08-02 16:57 | 2022-08-02 16:57 | 0w | 0d |  |  |  |  |  |  |  |

| ID | WBS | Task | Type | Duration | Start | Finish | Complete | Remaining | Baseline start | Baseline finish | Baseline duration | Total slack | Constraint | Resources | Work | Actual work | Cost | Baseline cost | Actual cost |
| --- | --- | --- | --- | --- | --- | --- | --- | --- | --- | --- | --- | --- | --- | --- | --- | --- | --- | --- | --- |
| 28 | 11 | **Совещание** |  | 99d | 2022-03-02 09:00 A | 2022-07-27 10:00 | 50% | 49.5d | 2022-03-02 09:00 | 2022-07-27 10:00 | 99d | 0d |  |  | 154h | 77h | 1,342 | 1,342 | 671 |
| 29 | 11.1 | Совещание 1 | manual | 1h | 2022-03-02 09:00 A | 2022-03-02 10:00 A | 100% |  | 2022-03-02 09:00 | 2022-03-02 10:00 | 1h |  | start no earlier than 2022-03-02 09:00 | 3D аниматор; Web-дизайнер; Ведущий программист; Мультимедиа-корреспондент; Системный аналитик; Художник-дизайнер; Технический писатель | 7h | 7h | 61 | 61 | 61 |
| 30 | 11.2 | Совещание 2 | manual | 1h | 2022-03-09 09:00 A | 2022-03-09 10:00 A | 100% |  | 2022-03-09 09:00 | 2022-03-09 10:00 | 1h |  | start no earlier than 2022-03-09 09:00 | 3D аниматор; Web-дизайнер; Ведущий программист; Мультимедиа-корреспондент; Системный аналитик; Художник-дизайнер; Технический писатель | 7h | 7h | 61 | 61 | 61 |
| 31 | 11.3 | Совещание 3 | manual | 1h | 2022-03-16 09:00 A | 2022-03-16 10:00 A | 100% |  | 2022-03-16 09:00 | 2022-03-16 10:00 | 1h |  | start no earlier than 2022-03-16 09:00 | 3D аниматор; Web-дизайнер; Ведущий программист; Мультимедиа-корреспондент; Системный аналитик; Художник-дизайнер; Технический писатель | 7h | 7h | 61 | 61 | 61 |
| 32 | 11.4 | Совещание 4 | manual | 1h | 2022-03-23 09:00 A | 2022-03-23 10:00 A | 100% |  | 2022-03-23 09:00 | 2022-03-23 10:00 | 1h |  | start no earlier than 2022-03-23 09:00 | 3D аниматор; Web-дизайнер; Ведущий программист; Мультимедиа-корреспондент; Системный аналитик; Художник-дизайнер; Технический писатель | 7h | 7h | 61 | 61 | 61 |
| 33 | 11.5 | Совещание 5 | manual | 1h | 2022-03-30 09:00 A | 2022-03-30 10:00 A | 100% |  | 2022-03-30 09:00 | 2022-03-30 10:00 | 1h |  | start no earlier than 2022-03-30 09:00 | 3D аниматор; Web-дизайнер; Ведущий программист; Мультимедиа-корреспондент; Системный аналитик; Художник-дизайнер; Технический писатель | 7h | 7h | 61 | 61 | 61 |
| 34 | 11.6 | Совещание 6 | manual | 1h | 2022-04-06 09:00 A | 2022-04-06 10:00 A | 100% |  | 2022-04-06 09:00 | 2022-04-06 10:00 | 1h |  | start no earlier than 2022-04-06 09:00 | 3D аниматор; Web-дизайнер; Ведущий программист; Мультимедиа-корреспондент; Системный аналитик; Художник-дизайнер; Технический писатель | 7h | 7h | 61 | 61 | 61 |
| 35 | 11.7 | Совещание 7 | manual | 1h | 2022-04-13 09:00 A | 2022-04-13 10:00 A | 100% |  | 2022-04-13 09:00 | 2022-04-13 10:00 | 1h |  | start no earlier than 2022-04-13 09:00 | 3D аниматор; Web-дизайнер; Ведущий программист; Мультимедиа-корреспондент; Системный аналитик; Художник-дизайнер; Технический писатель | 7h | 7h | 61 | 61 | 61 |
| 36 | 11.8 | Совещание 8 | manual | 1h | 2022-04-20 09:00 A | 2022-04-20 10:00 A | 100% |  | 2022-04-20 09:00 | 2022-04-20 10:00 | 1h |  | start no earlier than 2022-04-20 09:00 | 3D аниматор; Web-дизайнер; Ведущий программист; Мультимедиа-корреспондент; Системный аналитик; Художник-дизайнер; Технический писатель | 7h | 7h | 61 | 61 | 61 |
| 37 | 11.9 | Совещание 9 | manual | 1h | 2022-04-27 09:00 A | 2022-04-27 10:00 A | 100% |  | 2022-04-27 09:00 | 2022-04-27 10:00 | 1h |  | start no earlier than 2022-04-27 09:00 | 3D аниматор; Web-дизайнер; Ведущий программист; Мультимедиа-корреспондент; Системный аналитик; Художник-дизайнер; Технический писатель | 7h | 7h | 61 | 61 | 61 |
| 38 | 11.10 | Совещание 10 | manual | 1h | 2022-05-04 09:00 A | 2022-05-04 10:00 A | 100% |  | 2022-05-04 09:00 | 2022-05-04 10:00 | 1h |  | start no earlier than 2022-05-04 09:00 | 3D аниматор; Web-дизайнер; Ведущий программист; Мультимедиа-корреспондент; Системный аналитик; Художник-дизайнер; Технический писатель | 7h | 7h | 61 | 61 | 61 |
| 39 | 11.11 | Совещание 11 | manual | 1h | 2022-05-11 09:00 A | 2022-05-11 10:00 A | 100% |  | 2022-05-11 09:00 | 2022-05-11 10:00 | 1h |  | start no earlier than 2022-05-11 09:00 | 3D аниматор; Web-дизайнер; Ведущий программист; Мультимедиа-корреспондент; Системный аналитик; Художник-дизайнер; Технический писатель | 7h | 7h | 61 | 61 | 61 |
| 40 | 11.12 | Совещание 12 | manual | 1h | 2022-05-18 09:00 | 2022-05-18 10:00 |  |  | 2022-05-18 09:00 | 2022-05-18 10:00 | 1h |  | start no earlier than 2022-05-18 09:00 | 3D аниматор; Web-дизайнер; Ведущий программист; Мультимедиа-корреспондент; Системный аналитик; Художник-дизайнер; Технический писатель | 7h |  | 61 | 61 |  |
| 41 | 11.13 | Совещание 13 | manual | 1h | 2022-05-25 09:00 | 2022-05-25 10:00 |  |  | 2022-05-25 09:00 | 2022-05-25 10:00 | 1h |  | start no earlier than 2022-05-25 09:00 | 3D аниматор; Web-дизайнер; Ведущий программист; Мультимедиа-корреспондент; Системный аналитик; Художник-дизайнер; Технический писатель | 7h |  | 61 | 61 |  |
| 42 | 11.14 | Совещание 14 | manual | 1h | 2022-06-01 09:00 | 2022-06-01 10:00 |  |  | 2022-06-01 09:00 | 2022-06-01 10:00 | 1h |  | start no earlier than 2022-06-01 09:00 | 3D аниматор; Web-дизайнер; Ведущий программист; Мультимедиа-корреспондент; Системный аналитик; Художник-дизайнер; Технический писатель | 7h |  | 61 | 61 |  |
| 43 | 11.15 | Совещание 15 | manual | 1h | 2022-06-08 09:00 | 2022-06-08 10:00 |  |  | 2022-06-08 09:00 | 2022-06-08 10:00 | 1h |  | start no earlier than 2022-06-08 09:00 | 3D аниматор; Web-дизайнер; Ведущий программист; Мультимедиа-корреспондент; Системный аналитик; Художник-дизайнер; Технический писатель | 7h |  | 61 | 61 |  |
| 44 | 11.16 | Совещание 16 | manual | 1h | 2022-06-15 09:00 | 2022-06-15 10:00 |  |  | 2022-06-15 09:00 | 2022-06-15 10:00 | 1h |  | start no earlier than 2022-06-15 09:00 | 3D аниматор; Web-дизайнер; Ведущий программист; Мультимедиа-корреспондент; Системный аналитик; Художник-дизайнер; Технический писатель | 7h |  | 61 | 61 |  |
| 45 | 11.17 | Совещание 17 | manual | 1h | 2022-06-22 09:00 | 2022-06-22 10:00 |  |  | 2022-06-22 09:00 | 2022-06-22 10:00 | 1h |  | start no earlier than 2022-06-22 09:00 | 3D аниматор; Web-дизайнер; Ведущий программист; Мультимедиа-корреспондент; Системный аналитик; Художник-дизайнер; Технический писатель | 7h |  | 61 | 61 |  |
| 46 | 11.18 | Совещание 18 | manual | 1h | 2022-06-29 09:00 | 2022-06-29 10:00 |  |  | 2022-06-29 09:00 | 2022-06-29 10:00 | 1h |  | start no earlier than 2022-06-29 09:00 | 3D аниматор; Web-дизайнер; Ведущий программист; Мультимедиа-корреспондент; Системный аналитик; Художник-дизайнер; Технический писатель | 7h |  | 61 | 61 |  |
| 47 | 11.19 | Совещание 19 | manual | 1h | 2022-07-06 09:00 | 2022-07-06 10:00 |  |  | 2022-07-06 09:00 | 2022-07-06 10:00 | 1h |  | start no earlier than 2022-07-06 09:00 | 3D аниматор; Web-дизайнер; Ведущий программист; Мультимедиа-корреспондент; Системный аналитик; Художник-дизайнер; Технический писатель | 7h |  | 61 | 61 |  |
| 48 | 11.20 | Совещание 20 | manual | 1h | 2022-07-13 09:00 | 2022-07-13 10:00 |  |  | 2022-07-13 09:00 | 2022-07-13 10:00 | 1h |  | start no earlier than 2022-07-13 09:00 | 3D аниматор; Web-дизайнер; Ведущий программист; Мультимедиа-корреспондент; Системный аналитик; Художник-дизайнер; Технический писатель | 7h |  | 61 | 61 |  |
| 49 | 11.21 | Совещание 21 | manual | 1h | 2022-07-20 09:00 | 2022-07-20 10:00 |  |  | 2022-07-20 09:00 | 2022-07-20 10:00 | 1h |  | start no earlier than 2022-07-20 09:00 | 3D аниматор; Web-дизайнер; Ведущий программист; Мультимедиа-корреспондент; Системный аналитик; Художник-дизайнер; Технический писатель | 7h |  | 61 | 61 |  |
| 50 | 11.22 | Совещание 22 | manual | 1h | 2022-07-27 09:00 | 2022-07-27 10:00 |  |  | 2022-07-27 09:00 | 2022-07-27 10:00 | 1h |  | start no earlier than 2022-07-27 09:00 | 3D аниматор; Web-дизайнер; Ведущий программист; Мультимедиа-корреспондент; Системный аналитик; Художник-дизайнер; Технический писатель | 7h |  | 61 | 61 |  |
