# Лаб_раб_1

Schedule from MS Project, 2022-03-01 to 2022-08-01, status date 2022-05-13, costs in ₽, A marks actual dates.
Команда разработчиков из 16 человек занимается созданием карты города на основе собственного модуля отображения. Проект должен быть завершен в течение 6 месяцев. Бюджет проекта: 50 000 рублей

## Calendars

- Стандартный: Mon-Fri 09:00-13:00, 14:00-18:00; Sat-Sun off. Exceptions (off unless hours are given): 2022-03-05 09:00-13:00, 14:00-17:00 (Рабочий день), 2022-03-07 to 2022-03-08 (7-8 марта - выходные), 2022-05-02 to 2022-05-03 (2-3 мая - выходные), 2022-05-09 to 2022-05-10 (9-10 мая выходные), 2022-06-13 (13 июня - выходной).

## Resources

| Resource | Group | Rate | Cost per use |
| --- | --- | --- | --- |
| Ведущий программист | Программирование | 10 | 100 |
| Программист#1 | Программирование | 7 | 50 |
| Программист#2 | Программирование | 7 | 50 |
| Программист#3 | Программирование | 7 | 50 |
| Программист#4 | Программирование | 7 | 50 |
| Системный аналитик | Анализ | 20 | 300 |
| Художник-дизайнер | Дизайн | 8 | 70 |
| Технический писатель | Документация | 5 | 20 |
| Web-дизайнер | Internet | 7 | 50 |
| 3D аниматор | Дизайн | 8 | 70 |
| Мультимедиа-корреспондент | М-медиа | 3 | 20 |
| Наборщик данных#1 | Ввод данных | 2 | 10 |
| Наборщик данных#2 | Ввод данных | 2 | 10 |
| Наборщик данных#3 | Ввод данных | 2 | 10 |
| Наборщик данных#4 | Ввод данных | 2 | 10 |
| Наборщик данных#5 | Ввод данных | 2 | 10 |
| Сервер |  | 2 |  |
| Спец. ПО |  |  | 800 |
| Программист#5 | Программирование | 7.7 | 50 |

## Schedule

| ID | WBS | Task | Type | Duration | Start | Finish | Predecessors | Complete | Remaining | Baseline start | Baseline finish | Baseline duration | Total slack | Free slack | Resources | Work | Actual work | Cost | Baseline cost | Actual cost |
| --- | --- | --- | --- | --- | --- | --- | --- | --- | --- | --- | --- | --- | --- | --- | --- | --- | --- | --- | --- | --- |
| 1 | 1 | Начало проекта | milestone | 0w | 2022-03-01 09:00 A | 2022-03-01 09:00 A |  | 100% |  | 2022-03-01 09:00 | 2022-03-01 09:00 | 0w |  |  |  |  |  |  |  |  |
| 2 | 2 | **Создание интерфейса** |  | 81.23d | 2022-03-01 09:00 A | 2022-06-30 11:50 | 1 | 84% | 12.83d | 2022-03-01 09:00 | 2022-07-01 11:31 | 82.19d | 0d | 0.97d |  | 500h | 320h | 5,306 | 5,180 | 3,610 |
| 3 | 2.1 | **Разработка дизайна интерфейса** |  | 29.12d | 2022-03-01 09:00 A | 2022-04-12 11:00 A |  | 100% |  | 2022-03-01 09:00 | 2022-04-06 16:00 | 25.62d |  |  |  | 320h | 320h | 2,770 | 2,770 | 2,770 |
| 4 | 2.1.1 | Разработка 2D графических элементов |  | 3w | 2022-03-01 09:00 A | 2022-03-23 13:00 A |  | 100% |  | 2022-03-01 09:00 | 2022-03-23 13:00 | 3w |  |  | Художник-дизайнер | 120h | 120h | 1,030 | 1,030 | 1,030 |
| 5 | 2.1.2 | Разработка 3D графических элементов |  | 2w | 2022-03-01 09:00 A | 2022-03-16 12:00 A | 4SS | 100% |  | 2022-03-01 09:00 | 2022-03-16 12:00 | 2w |  |  | 3D аниматор | 80h | 80h | 710 | 710 | 710 |
| 6 | 2.1.3 | Создание заставки |  | 3w | 2022-03-22 09:00 A | 2022-04-12 11:00 A | 5 | 100% |  | 2022-03-16 14:00 | 2022-04-06 16:00 | 3w |  |  | 3D аниматор | 120h | 120h | 1,030 | 1,030 | 1,030 |
| 7 | 2.2 | Программирование интерфейса |  | 1.5w | 2022-06-20 16:50 | 2022-06-30 11:50 | 3, 12 |  |  | 2022-06-21 16:31 | 2022-07-01 11:31 | 1.5w | 0d |  | Программист#3; Программист#4; Программист#5 | 180h |  | 1,536 | 1,410 |  |
| 8 | 3 | **Построение базы объектов** |  | 86.82d | 2022-03-23 15:00 A | 2022-07-29 12:32 |  | 31% | 59.87d | 2022-03-23 15:00 | 2022-07-27 16:00 | 85.12d | 1.41d |  | Сервер | 5669.54h | 1415.18h | 14,625.92 | 15,580 | 5,638.87 |
| 9 | 3.1 | Анализ и построение структуры базы объектов |  | 2w | 2022-03-23 15:00 A | 2022-04-06 16:00 A |  | 100% |  | 2022-03-23 15:00 | 2022-04-06 16:00 | 2w |  |  | Системный аналитик | 80h | 80h | 1,900 | 1,900 | 1,900 |
| 10 | 3.2 | Программирование средств обработки базы объектов |  | 1.5w | 2022-04-06 16:00 A | 2022-04-29 12:32 A | 9 | 100% |  | 2022-04-06 16:00 | 2022-04-27 16:00 | 3w |  |  | Программист#4; Программист#3 | 120h | 120h | 998.8 | 1,780 | 998.8 |
| 11 | 3.3 | Наполнение базы объектов |  | 12w | 2022-04-29 12:32 A | 2022-07-29 12:32 | 10 | 11% | 10.69w | 2022-04-27 16:00 | 2022-07-27 16:00 | 12w | 1.41d |  | Наборщик данных#1; Наборщик данных#2; Наборщик данных#3; Наборщик данных#4; Наборщик данных#5 | 2400h | 262.32h | 4,850 | 4,850 | 574.63 |
| 12 | 4 | **Создание ядра GIS** |  | 73.73d | 2022-03-01 09:00 A | 2022-06-20 16:50 |  | 67% | 24.35d | 2022-03-01 09:00 | 2022-06-21 16:31 | 74.69d | 0d |  |  | 1908.62h | 1047.97h | 20,055.8 | 18,389.14 | 12,624.45 |
| 13 | 4.1 | Анализ и проектирование ядра |  | 3.05w | 2022-03-01 09:00 A | 2022-03-23 13:00 A |  | 100% |  | 2022-03-01 09:00 | 2022-03-23 13:00 | 3.05w |  |  | Ведущий программист; Системный аналитик | 240h | 240h | 4,000 | 4,000 | 4,000 |
| 14 | 4.2 | Создание модели ядра |  | 3.39w | 2022-03-23 14:00 A | 2022-04-15 12:32 A | 13 | 100% |  | 2022-03-23 14:00 | 2022-04-15 12:32 | 3.39w |  |  | Ведущий программист; Программист#1; Программист#2 | 400h | 400h | 3,421.57 | 3,396.69 | 3,421.57 |
| 15 | 4.3 | Тестирование модели ядра |  | 0.99w | 2022-04-15 12:32 A | 2022-05-16 10:49 | 14 | 95% | 0.05w | 2022-04-15 12:32 | 2022-04-19 17:32 | 0.5w | 0d |  | Программист#2; Спец. ПО; Программист#3; Программист#4; Программист#5 | 40h | 34.51h | 1,308.01 | 380 | 1,165.71 |
| 16 | 4.4 | Создание рабочей версии ядра |  | 7.63w | 2022-04-20 14:00 A | 2022-06-20 16:50 | 15 | 35% | 4.93w | 2022-04-19 17:32 | 2022-06-21 16:31 | 7.97w | 0d | 0.97d | Ведущий программист; Программист#2; Программист#3; Программист#4; Программист#5 | 1228.61h | 373.46h | 10,326.22 | 9,612.44 | 3,367.17 |
| 17 | 5 | Создание мультимедиа - наполения |  | 6w | 2022-04-06 16:00 A | 2022-05-25 13:00 | 3 | 60% | 2.4w | 2022-04-06 16:00 | 2022-05-25 13:00 | 6w | 47.35d | 45.94d | Мультимедиа-корреспондент | 240h | 144h | 794.9 | 740 | 478.1 |
| 18 | 6 | Создание справочной системы |  | 2w | 2022-07-11 15:50 | 2022-07-25 16:50 | 7 |  |  | 2022-07-12 15:31 | 2022-07-26 16:31 | 2w | 4.99d | 11.09d | Технический писатель | 80h |  | 420 | 420 |  |
| 19 | 7 | **Создание руководства пользователя** |  | 17.25d | 2022-06-16 11:50 | 2022-07-11 14:50 | 7FS-10d |  |  | 2022-06-17 11:31 | 2022-07-12 14:31 | 17.25d | 0d | 0.97d |  | 160h |  | 1,010 | 1,010 |  |
| 20 | 7.1 | Разработка дизайна руководства |  | 1w | 2022-06-16 11:50 | 2022-06-23 11:50 |  |  |  | 2022-06-17 11:31 | 2022-06-24 11:31 | 1w | 0d |  | Художник-дизайнер | 40h |  | 390 | 390 |  |
| 21 | 7.2 | Написание руководства пользователя |  | 3w | 2022-06-20 11:50 | 2022-07-11 14:50 | 20SS+2d |  |  | 2022-06-21 11:31 | 2022-07-12 14:31 | 3w | 0d |  | Технический писатель | 120h |  | 620 | 620 |  |
| 22 | 8 | **Создание web-сайта и поддержка** |  | 23.38d | 2022-06-20 11:50 | 2022-07-21 15:50 |  |  |  | 2022-06-21 11:31 | 2022-07-22 15:31 | 23.38d | 0d |  |  | 248h |  | 2,106 | 2,106 |  |
| 23 | 8.1 | Разработка структуры сайта |  | 1d | 2022-06-20 11:50 | 2022-06-21 11:50 | 21SS |  |  | 2022-06-21 11:31 | 2022-06-22 11:31 | 1d | 0d |  | Web-дизайнер | 8h |  | 106 | 106 |  |
| 24 | 8.2 | Разработка дизайна сайта |  | 1.43w | 2022-06-21 11:50 | 2022-06-30 12:50 | 23 |  |  | 2022-06-22 11:31 | 2022-07-01 12:31 | 1.43w | 0d |  | Web-дизайнер; 3D аниматор; Художник-дизайнер | 120h |  | 1,110 | 1,110 |  |
| 25 | 8.3 | Наполение сайта |  | 3w | 2022-06-30 12:50 | 2022-07-21 15:50 | 24 |  |  | 2022-07-01 12:31 | 2022-07-22 15:31 | 3w | 0d | 0.97d | Web-дизайнер | 120h |  | 890 | 890 |  |
| 26 | 9 | Тестирование сайта |  | 2.42w | 2022-07-14 15:50 | 2022-08-01 16:47 | 22FS-1w |  |  | 2022-07-15 15:31 | 2022-08-02 16:57 | 2.44w | 0d |  | Ведущий программист; Программист#2; Программист#3; Программист#4 | 383.03h |  | 3,416.86 | 3,945.15 |  |
| 27 | 10 | Сдача сайта в эксплуатацию | milestone | 0w | 2022-08-01 16:47 | 2022-08-01 16:47 | 26 |  |  | 2022-08-02 16:57 | 2022-08-02 16:57 | 0w | 0d | 0.97d |  |  |  |  |  |  |

| ID | WBS | Task | Type | Duration | Start | Finish | Complete | Remaining | Baseline start | Baseline finish | Baseline duration | Total slack | Constraint | Resources | Work | Actual work | Cost | Baseline cost | Actual cost |
| --- | --- | --- | --- | --- | --- | --- | --- | --- | --- | --- | --- | --- | --- | --- | --- | --- | --- | --- | --- |
| 28 | 11 | **Совещание** |  | 99d | 2022-03-02 09:00 A | 2022-07-27 10:00 | 50% | 49.5d | 2022-03-02 09:00 | 2022-07-27 10:00 | 99d | 0d |  |  | 153h | 76h | 1,332 | 1,342 | 661 |
| 29 | 11.1 | Совещание 1 | manual | 1h | 2022-03-02 09:00 A | 2022-03-02 10:00 A | 100% |  | 2022-03-02 09:00 | 2022-03-02 10:00 | 1h |  | start no earlier than 2022-03-02 09:00 | 3D аниматор; Web-дизайнер; Ведущий программист; Мультимедиа-корреспондент; Системный аналитик; Художник-дизайнер; Технический писатель | 7h | 7h | 61 | 61 | 61 |
| 30 | 11.2 | Совещание 2 | manual | 1h | 2022-03-09 09:00 A | 2022-03-09 10:00 A | 100% |  | 2022-03-09 09:00 | 2022-03-09 10:00 | 1h |  | start no earlier than 2022-03-09 09:00 | 3D аниматор; Web-дизайнер; Ведущий программист; Мультимедиа-корреспондент; Системный аналитик; Художник-дизайнер; Технический писатель | 7h | 7h | 61 | 61 | 61 |
| 31 | 11.3 | Совещание 3 | manual | 1h | 2022-03-16 09:00 A | 2022-03-16 10:00 A | 100% |  | 2022-03-16 09:00 | 2022-03-16 10:00 | 1h |  | start no earlier than 2022-03-16 09:00 | 3D аниматор; Web-дизайнер; Ведущий программист; Мультимедиа-корреспондент; Системный аналитик; Художник-дизайнер; Технический писатель | 7h | 7h | 61 | 61 | 61 |
| 32 | 11.4 | Совещание 4 | manual | 1h | 2022-03-23 09:00 A | 2022-03-23 10:00 A | 100% |  | 2022-03-23 09:00 | 2022-03-23 10:00 | 1h |  | start no earlier than 2022-03-23 09:00 | 3D аниматор; Web-дизайнер; Ведущий программист; Мультимедиа-корреспондент; Системный аналитик; Художник-дизайнер; Технический писатель | 7h | 7h | 61 | 61 | 61 |
| 33 | 11.5 | Совещание 5 | manual | 1h | 2022-03-30 09:00 A | 2022-03-30 10:00 A | 100% |  | 2022-03-30 09:00 | 2022-03-30 10:00 | 1h |  | start no earlier than 2022-03-30 09:00 | 3D аниматор; Web-дизайнер; Ведущий программист; Мультимедиа-корреспондент; Системный аналитик; Художник-дизайнер; Технический писатель | 7h | 7h | 61 | 61 | 61 |
| 34 | 11.6 | Совещание 6 | manual | 1h | 2022-04-06 09:00 A | 2022-04-06 10:00 A | 100% |  | 2022-04-06 09:00 | 2022-04-06 10:00 | 1h |  | start no earlier than 2022-04-06 09:00 | 3D аниматор; Web-дизайнер; Мультимедиа-корреспондент; Системный аналитик; Художник-дизайнер; Технический писатель | 6h | 6h | 51 | 61 | 51 |
| 35 | 11.7 | Совещание 7 | manual | 1h | 2022-04-13 09:00 A | 2022-04-13 10:00 A | 100% |  | 2022-04-13 09:00 | 2022-04-13 10:00 | 1h |  | start no earlier than 2022-04-13 09:00 | 3D аниматор; Web-дизайнер; Ведущий программист; Мультимедиа-корреспондент; Системный аналитик; Художник-дизайнер; Технический писатель | 7h | 7h | 61 | 61 | 61 |
| 36 | 11.8 | Совещание 8 | manual | 1h | 2022-04-20 09:00 A | 2022-04-20 10:00 A | 100% |  | 2022-04-20 09:00 | 2022-04-20 10:00 | 1h |  | start no earlier than 2022-04-20 09:00 | 3D аниматор; Web-дизайнер; Ведущий программист; Мультимедиа-корреспондент; Системный аналитик; Художник-дизайнер; Технический писатель | 7h | 7h | 61 | 61 | 61 |
| 37 | 11.9 | Совещание 9 | manual | 1h | 2022-04-27 09:00 A | 2022-04-27 10:00 A | 100% |  | 2022-04-27 09:00 | 2022-04-27 10:00 | 1h |  | start no earlier than 2022-04-27 09:00 | 3D аниматор; Web-дизайнер; Ведущий программист; Мультимедиа-корреспондент; Системный аналитик; Художник-дизайнер; Технический писатель | 7h | 7h | 61 | 61 | 61 |
| 38 | 11.10 | Совещание 10 | manual | 1h | 2022-05-04 09:00 A | 2022-05-04 10:00 A | 100% |  | 2022-05-04 09:00 | 2022-05-04 10:00 | 1h |  | start no earlier than 2022-05-04 09:00 | 3D аниматор; Web-дизайнер; Ведущий программист; Мультимедиа-корреспондент; Системный аналитик; Художник-дизайнер; Технический писатель | 7h | 7h | 61 | 61 | 61 |
| 39 | 11.11 | Совещание 11 | manual | 1h | 2022-05-11 09:00 A | 2022-05-11 10:00 A | 100% |  | 2022-05-11 09:00 | 2022-05-11 10:00 | 1h |  | start no earlier than 2022-05-11 09:00 | 3D аниматор; Web-дизайнер; Ведущий программист; Мультимедиа-корреспондент; Системный аналитик; Художник-дизайнер; Технический писатель | 7h | 7h | 61 | 61 | 61 |
| 40 | 11.12 | Совещание 12 | manual | 1h | 2022-05-18 09:00 | 2022-05-18 10:00 |  |  | 2022-05-18 09:00 | 2022-05-18 10:00 | 1h |  | start no earlier than 2022-05-18 09:00 | 3D аниматор; Web-дизайнер; Ведущий программист; Мультимедиа-корреспондент; Системный аналитик; Художник-дизайнер; Технический писатель | 7h |  | 61 | 61 |  |
| 41 | 11.13 | Совещание 13 | manual | 1h | 2022-05-25 09:00 | 2022-05-25 10:00 |  |  | 2022-05-25 09:00 | 2022-05-25 10:00 | 1h |  | start no earlier than 2022-05-25 09:00 | 3D аниматор; Web-дизайнер; Ведущий программист; Мультимедиа-корреспондент; Системный аналитик; Художник-дизайнер; Технический писатель | 7h |  | 61 | 61 |  |
| 42 | 11.14 | Совещание 14 | manual | 1h | 2022-06-01 09:00 | 2022-06-01 10:00 |  |  | 2022-06-01 09:00 | 2022-06-01 10:00 | 1h |  | start no earlier than 2022-06-01 09:00 | 3D аниматор; Web-дизайнер; Ведущий программист; Мультимедиа-корреспондент; Системный аналитик; Художник-дизайнер; Технический писатель | 7h |  | 61 | 61 |  |
| 43 | 11.15 | Совещание 15 | manual | 1h | 2022-06-08 09:00 | 2022-06-08 10:00 |  |  | 2022-06-08 09:00 | 2022-06-08 10:00 | 1h |  | start no earlier than 2022-06-08 09:00 | 3D аниматор; Web-дизайнер; Ведущий программист; Мультимедиа-корреспондент; Системный аналитик; Художник-дизайнер; Технический писатель | 7h |  | 61 | 61 |  |
| 44 | 11.16 | Совещание 16 | manual | 1h | 2022-06-15 09:00 | 2022-06-15 10:00 |  |  | 2022-06-15 09:00 | 2022-06-15 10:00 | 1h |  | start no earlier than 2022-06-15 09:00 | 3D аниматор; Web-дизайнер; Ведущий программист; Мультимедиа-корреспондент; Системный аналитик; Художник-дизайнер; Технический писатель | 7h |  | 61 | 61 |  |
| 45 | 11.17 | Совещание 17 | manual | 1h | 2022-06-22 09:00 | 2022-06-22 10:00 |  |  | 2022-06-22 09:00 | 2022-06-22 10:00 | 1h |  | start no earlier than 2022-06-22 09:00 | 3D аниматор; Web-дизайнер; Ведущий программист; Мультимедиа-корреспондент; Системный аналитик; Художник-дизайнер; Технический писатель | 7h |  | 61 | 61 |  |
| 46 | 11.18 | Совещание 18 | manual | 1h | 2022-06-29 09:00 | 2022-06-29 10:00 |  |  | 2022-06-29 09:00 | 2022-06-29 10:00 | 1h |  | start no earlier than 2022-06-29 09:00 | 3D аниматор; Web-дизайнер; Ведущий программист; Мультимедиа-корреспондент; Системный аналитик; Художник-дизайнер; Технический писатель | 7h |  | 61 | 61 |  |
| 47 | 11.19 | Совещание 19 | manual | 1h | 2022-07-06 09:00 | 2022-07-06 10:00 |  |  | 2022-07-06 09:00 | 2022-07-06 10:00 | 1h |  | start no earlier than 2022-07-06 09:00 | 3D аниматор; Web-дизайнер; Ведущий программист; Мультимедиа-корреспондент; Системный аналитик; Художник-дизайнер; Технический писатель | 7h |  | 61 | 61 |  |
| 48 | 11.20 | Совещание 20 | manual | 1h | 2022-07-13 09:00 | 2022-07-13 10:00 |  |  | 2022-07-13 09:00 | 2022-07-13 10:00 | 1h |  | start no earlier than 2022-07-13 09:00 | 3D аниматор; Web-дизайнер; Ведущий программист; Мультимедиа-корреспондент; Системный аналитик; Художник-дизайнер; Технический писатель | 7h |  | 61 | 61 |  |
| 49 | 11.21 | Совещание 21 | manual | 1h | 2022-07-20 09:00 | 2022-07-20 10:00 |  |  | 2022-07-20 09:00 | 2022-07-20 10:00 | 1h |  | start no earlier than 2022-07-20 09:00 | 3D аниматор; Web-дизайнер; Ведущий программист; Мультимедиа-корреспондент; Системный аналитик; Художник-дизайнер; Технический писатель | 7h |  | 61 | 61 |  |
| 50 | 11.22 | Совещание 22 | manual | 1h | 2022-07-27 09:00 | 2022-07-27 10:00 |  |  | 2022-07-27 09:00 | 2022-07-27 10:00 | 1h |  | start no earlier than 2022-07-27 09:00 | 3D аниматор; Web-дизайнер; Ведущий программист; Мультимедиа-корреспондент; Системный аналитик; Художник-дизайнер; Технический писатель | 7h |  | 61 | 61 |  |
