# Лаб_раб_1

Schedule from MS Project, 2022-03-01 to 2022-08-02, status date 2022-05-13, costs in ₽, A marks actual dates.
Команда разработчиков из 16 человек занимается созданием карты города на основе собственного модуля отображения. Проект должен быть завершен в течение 6 месяцев. Бюджет проекта: 50 000 рублей

## Calendars

- Стандартный: Mon-Fri 09:00-13:00, 14:00-18:00; Sat-Sun off. Exceptions (off unless hours are given): 2022-03-05 09:00-13:00, 14:00-17:00 (Рабочий день), 2022-03-07 to 2022-03-08 (7-8 марта - выходные), 2022-05-02 to 2022-05-03 (2-3 мая - выходные), 2022-05-09 to 2022-05-10 (9-10 мая выходные), 2022-06-13 (13 июня - выходной).

## Resources

| Resource | Group | Rate | Cost per use |
| --- | --- | --- | --- |
| Ведущий программист | Программирование | 10 | 100 |
| Программист#1 | Программирование | 7 | 50 |
| Программист#2 | Программирование | 7 | 50 |
| Программист#3 | Программирование | 7 | 50 |
| Программист#4 | Программирование | 7 | 50 |
| Системный аналитик | Анализ | 20 | 300 |
| Художник-дизайнер | Дизайн | 8 | 70 |
| Технический писатель | Документация | 5 | 20 |
| Web-дизайнер | Internet | 7 | 50 |
| 3D аниматор | Дизайн | 8 | 70 |
| Мультимедиа-корреспондент | М-медиа | 3 | 20 |
| Наборщик данных#1 | Ввод данных | 2 | 10 |
| Наборщик данных#2 | Ввод данных | 2 | 10 |
| Наборщик данных#3 | Ввод данных | 2 | 10 |
| Наборщик данных#4 | Ввод данных | 2 | 10 |
| Наборщик данных#5 | Ввод данных | 2 | 10 |
| Сервер |  | 2 |  |
| Спец. ПО |  |  |  |
| Программист#5 | Программирование | 7.7 | 50 |

## Schedule

| ID | WBS | Task | Type | Duration | Start | Finish | Predecessors | Complete | Remaining | Baseline start | Baseline finish | Baseline duration | Total slack | Free slack | Resources | Work | Actual work | Cost | Baseline cost | Actual cost |
| --- | --- | --- | --- | --- | --- | --- | --- | --- | --- | --- | --- | --- | --- | --- | --- | --- | --- | --- | --- | --- |
| 1 | 1 | Начало проекта | milestone | 0w | 2022-03-01 09:00 A | 2022-03-01 09:00 A |  | 100% |  | 2022-03-01 09:00 | 2022-03-01 09:00 | 0w |  |  |  |  |  |  |  |  |
| 2 | 2 | **Построение базы объектов** |  | 87.44d | 2022-03-23 09:00 A | 2022-07-29 12:32 |  | 31% | 60.3d | 2022-03-23 15:00 | 2022-07-27 16:00 | 85.12d | 2.54d |  | Сервер | 5675.54h | 1417.04h | 14,637.92 | 15,580 | 5,643 |
| 3 | 2.1 | Анализ и построение структуры базы объектов |  | 2w | 2022-03-23 09:00 A | 2022-04-06 10:00 A |  | 100% |  | 2022-03-23 15:00 | 2022-04-06 16:00 | 2w |  |  | Системный аналитик | 80h | 80h | 1,900 | 1,900 | 1,900 |
| 4 | 2.2 | Программирование средств обработки базы объектов |  | 1.5w | 2022-04-06 16:00 A | 2022-04-29 12:32 A | 3 | 100% |  | 2022-04-06 16:00 | 2022-04-27 16:00 | 3w |  |  | Программист#4; Программист#3 | 120h | 120h | 998.8 | 1,780 | 998.8 |
| 5 | 2.3 | Наполнение базы объектов |  | 12w | 2022-04-29 12:32 A | 2022-07-29 12:32 | 4 | 11% | 10.69w | 2022-04-27 16:00 | 2022-07-27 16:00 | 12w | 2.54d |  | Наборщик данных#1; Наборщик данных#2; Наборщик данных#3; Наборщик данных#4; Наборщик данных#5 | 2400h | 262.32h | 4,850 | 4,850 | 574.63 |
| 6 | 3 | **Создание ядра GIS** |  | 73.73d | 2022-03-01 09:00 A | 2022-06-20 16:50 |  | 67% | 24.35d | 2022-03-01 09:00 | 2022-06-21 16:31 | 74.69d | 0d |  |  | 1908.62h | 1047.97h | 20,055.8 | 18,389.14 | 12,624.45 |
| 7 | 3.1 | Анализ и проектирование ядра |  | 3.05w | 2022-03-01 09:00 A | 2022-03-23 13:00 A |  | 100% |  | 2022-03-01 09:00 | 2022-03-23 13:00 | 3.05w |  |  | Ведущий программист; Системный аналитик | 240h | 240h | 4,000 | 4,000 | 4,000 |
| 8 | 3.2 | Создание модели ядра |  | 3.39w | 2022-03-23 14:00 A | 2022-04-15 12:32 A | 7 | 100% |  | 2022-03-23 14:00 | 2022-04-15 12:32 | 3.39w |  |  | Ведущий программист; Программист#1; Программист#2 | 400h | 400h | 3,421.57 | 3,396.69 | 3,421.57 |
| 9 | 3.3 | Тестирование модели ядра |  | 0.99w | 2022-04-15 12:32 A | 2022-05-16 10:49 | 8 | 95% | 0.05w | 2022-04-15 12:32 | 2022-04-19 17:32 | 0.5w | 0d |  | Программист#2; Спец. ПО; Программист#3; Программист#4; Программист#5 | 40h | 34.51h | 1,308.01 | 380 | 1,165.71 |
| 10 | 3.4 | Создание рабочей версии ядра |  | 7.63w | 2022-04-20 14:00 A | 2022-06-20 16:50 | 9 | 35% | 4.93w | 2022-04-19 17:32 | 2022-06-21 16:31 | 7.97w | 0d | 0.97d | Ведущий программист; Программист#2; Программист#3; Программист#4; Программист#5 | 1228.61h | 373.46h | 10,326.22 | 9,612.44 | 3,367.17 |
| 11 | 4 | **Разработка дизайна интерфейса** |  | 15.38d | 2022-03-01 09:00 A | 2022-03-23 13:00 A |  | 100% |  | 2022-03-01 09:00 | 2022-04-06 16:00 | 25.62d |  |  |  | 200h | 200h | 1,740 | 2,770 | 1,740 |
| 12 | 4.1 | Разработка 2D графических элементов |  | 3w | 2022-03-01 09:00 A | 2022-03-23 13:00 A |  | 100% |  | 2022-03-01 09:00 | 2022-03-23 13:00 | 3w |  |  | Художник-дизайнер | 120h | 120h | 1,030 | 1,030 | 1,030 |
| 13 | 4.2 | Разработка 3D графических элементов |  | 2w | 2022-03-01 09:00 A | 2022-03-16 12:00 A | 12SS | 100% |  | 2022-03-01 09:00 | 2022-03-16 12:00 | 2w |  |  | 3D аниматор | 80h | 80h | 710 | 710 | 710 |
| 14 | 5 | **Создание web-сайта** |  | 81.23d | 2022-03-01 09:00 A | 2022-06-30 11:50 |  | 78% | 18.19d | 2022-06-21 11:31 | 2022-07-22 15:31 | 23.38d | 0d |  |  | 428h | 248h | 3,782 | 2,106 | 2,246 |
| 15 | 5.1 | Разработка структуры сайта |  | 1d | 2022-03-01 09:00 A | 2022-03-01 18:00 A |  | 100% |  | 2022-06-21 11:31 | 2022-06-22 11:31 | 1d |  |  | Web-дизайнер | 8h | 8h | 106 | 106 | 106 |
| 16 | 5.2 | Разработка дизайна сайта |  | 2w | 2022-03-24 14:00 A | 2022-04-19 12:00 A | 15, 12FS+1d | 100% |  | 2022-06-22 11:31 | 2022-07-01 12:31 | 1.43w |  |  | Web-дизайнер; 3D аниматор; Художник-дизайнер | 120h | 120h | 1,110 | 1,110 | 1,110 |
| 17 | 5.3 | Программирование интерфейса |  | 1.5w | 2022-06-20 16:50 | 2022-06-30 11:50 | 6, 11, 9SS+7d |  |  | 2022-06-21 16:31 | 2022-07-01 11:31 | 1.5w | 0d |  | Программист#3; Программист#4; Программист#5 | 180h |  | 1,536 | 1,410 |  |
| 18 | 5.4 | Создание заставки |  | 3w | 2022-03-22 09:00 A | 2022-04-12 11:00 A | 16 | 100% |  | 2022-03-16 14:00 | 2022-04-06 16:00 | 3w |  |  | 3D аниматор | 120h | 120h | 1,030 | 1,030 | 1,030 |
| 19 | 6 | **Создание руководства пользователя** |  | 23.62d | 2022-06-30 11:50 | 2022-08-02 17:50 | 14 |  |  | 2022-06-17 11:31 | 2022-07-12 14:31 | 17.25d | 0d |  |  | 160h |  | 1,010 | 1,010 |  |
| 20 | 6.1 | Разработка дизайна руководства |  | 1w | 2022-06-30 11:50 | 2022-07-07 11:50 |  |  |  | 2022-06-17 11:31 | 2022-06-24 11:31 | 1w | 0d |  | Художник-дизайнер | 40h |  | 390 | 390 |  |
| 21 | 6.2 | Написание руководства пользователя |  | 3w | 2022-07-12 15:50 | 2022-08-02 17:50 | 20SS |  |  | 2022-06-21 11:31 | 2022-07-12 14:31 | 3w | 0d | 6.09d | Технический писатель | 120h |  | 620 | 620 |  |
| 22 | 7 | **Наполнение** |  | 63.86d | 2022-04-06 16:00 A | 2022-07-12 14:50 |  | 67% | 21.04d |  |  |  | 3.26d | 0d |  | 440h | 295h | 2,104.9 |  | 1,448.2 |
| 23 | 7.1 | Создание мультимедиа - наполения |  | 6w | 2022-04-06 16:00 A | 2022-05-25 13:00 | 11 | 75% | 1.48w | 2022-04-06 16:00 | 2022-05-25 13:00 | 6w | 36.36d | 33.82d | Мультимедиа-корреспондент | 240h | 181h | 794.9 | 740 | 600.2 |
| 24 | 7.2 | Создание справочной системы |  | 2w | 2022-06-28 11:50 | 2022-07-12 14:50 | 17FS-2d |  |  | 2022-07-12 15:31 | 2022-07-26 16:31 | 2w | 3.26d | 0.97d | Технический писатель | 80h |  | 420 | 420 |  |
| 25 | 7.3 | Наполение сайта |  | 3w | 2022-04-19 12:00 A | 2022-05-16 16:00 | 16 | 95% | 0.15w | 2022-07-01 12:31 | 2022-07-22 15:31 | 3w | 43.11d | 40.57d | Web-дизайнер | 120h | 114h | 890 | 890 | 848 |
| 26 | 8 | Тестирование сайта |  | 2.42w | 2022-07-12 14:50 | 2022-07-28 15:47 | 22 |  |  | 2022-07-15 15:31 | 2022-08-02 16:57 | 2.44w | 3.26d |  | Ведущий программист; Программист#2; Программист#3; Программист#4 | 383.03h |  | 3,416.86 | 3,945.15 |  |
| 27 | 9 | Сдача сайта в эксплуатацию | milestone | 0w | 2022-08-02 17:50 | 2022-08-02 17:50 | 26, 2, 6, 11, 14, 19, 22 |  |  | 2022-08-02 16:57 | 2022-08-02 16:57 | 0w | 0d |  |  |  |  |  |  |  |

| ID | WBS | Task | Type | Duration | Start | Finish | Complete | Remaining | Baseline start | Baseline finish | Baseline duration | Total slack | Constraint | Resources | Work | Actual work | Cost | Baseline cost | Actual cost |
| --- | --- | --- | --- | --- | --- | --- | --- | --- | --- | --- | --- | --- | --- | --- | --- | --- | --- | --- | --- |
| 28 | 10 | **Совещание** |  | 99d | 2022-03-02 09:00 A | 2022-07-27 10:00 | 50% | 49.5d | 2022-03-02 09:00 | 2022-07-27 10:00 | 99d | 0d |  |  | 153h | 76h | 1,332 | 1,342 | 661 |
| 29 | 10.1 | Совещание 1 | manual | 1h | 2022-03-02 09:00 A | 2022-03-02 10:00 A | 100% |  | 2022-03-02 09:00 | 2022-03-02 10:00 | 1h |  | start no earlier than 2022-03-02 09:00 | 3D аниматор; Web-дизайнер; Ведущий программист; Мультимедиа-корреспондент; Системный аналитик; Художник-дизайнер; Технический писатель | 7h | 7h | 61 | 61 | 61 |
| 30 | 10.2 | Совещание 2 | manual | 1h | 2022-03-09 09:00 A | 2022-03-09 10:00 A | 100% |  | 2022-03-09 09:00 | 2022-03-09 10:00 | 1h |  | start no earlier than 2022-03-09 09:00 | 3D аниматор; Web-дизайнер; Ведущий программист; Мультимедиа-корреспондент; Системный аналитик; Художник-дизайнер; Технический писатель | 7h | 7h | 61 | 61 | 61 |
| 31 | 10.3 | Совещание 3 | manual | 1h | 2022-03-16 09:00 A | 2022-03-16 10:00 A | 100% |  | 2022-03-16 09:00 | 2022-03-16 10:00 | 1h |  | start no earlier than 2022-03-16 09:00 | 3D аниматор; Web-дизайнер; Ведущий программист; Мультимедиа-корреспондент; Системный аналитик; Художник-дизайнер; Технический писатель | 7h | 7h | 61 | 61 | 61 |
| 32 | 10.4 | Совещание 4 | manual | 1h | 2022-03-23 09:00 A | 2022-03-23 10:00 A | 100% |  | 2022-03-23 09:00 | 2022-03-23 10:00 | 1h |  | start no earlier than 2022-03-23 09:00 | 3D аниматор; Web-дизайнер; Ведущий программист; Мультимедиа-корреспондент; Системный аналитик; Художник-дизайнер; Технический писатель | 7h | 7h | 61 | 61 | 61 |
| 33 | 10.5 | Совещание 5 | manual | 1h | 2022-03-30 09:00 A | 2022-03-30 10:00 A | 100% |  | 2022-03-30 09:00 | 2022-03-30 10:00 | 1h |  | start no earlier than 2022-03-30 09:00 | 3D аниматор; Web-дизайнер; Ведущий программист; Мультимедиа-корреспондент; Системный аналитик; Художник-дизайнер; Технический писатель | 7h | 7h | 61 | 61 | 61 |
| 34 | 10.6 | Совещание 6 | manual | 1h | 2022-04-06 09:00 A | 2022-04-06 10:00 A | 100% |  | 2022-04-06 09:00 | 2022-04-06 10:00 | 1h |  | start no earlier than 2022-04-06 09:00 | 3D аниматор; Web-дизайнер; Мультимедиа-корреспондент; Системный аналитик; Художник-дизайнер; Технический писатель | 6h | 6h | 51 | 61 | 51 |
| 35 | 10.7 | Совещание 7 | manual | 1h | 2022-04-13 09:00 A | 2022-04-13 10:00 A | 100% |  | 2022-04-13 09:00 | 2022-04-13 10:00 | 1h |  | start no earlier than 2022-04-13 09:00 | 3D аниматор; Web-дизайнер; Ведущий программист; Мультимедиа-корреспондент; Системный аналитик; Художник-дизайнер; Технический писатель | 7h | 7h | 61 | 61 | 61 |
| 36 | 10.8 | Совещание 8 | manual | 1h | 2022-04-20 09:00 A | 2022-04-20 10:00 A | 100% |  | 2022-04-20 09:00 | 2022-04-20 10:00 | 1h |  | start no earlier than 2022-04-20 09:00 | 3D аниматор; Web-дизайнер; Ведущий программист; Мультимедиа-корреспондент; Системный аналитик; Художник-дизайнер; Технический писатель | 7h | 7h | 61 | 61 | 61 |
| 37 | 10.9 | Совещание 9 | manual | 1h | 2022-04-27 09:00 A | 2022-04-27 10:00 A | 100% |  | 2022-04-27 09:00 | 2022-04-27 10:00 | 1h |  | start no earlier than 2022-04-27 09:00 | 3D аниматор; Web-дизайнер; Ведущий программист; Мультимедиа-корреспондент; Системный аналитик; Художник-дизайнер; Технический писатель | 7h | 7h | 61 | 61 | 61 |
| 38 | 10.10 | Совещание 10 | manual | 1h | 2022-05-04 09:00 A | 2022-05-04 10:00 A | 100% |  | 2022-05-04 09:00 | 2022-05-04 10:00 | 1h |  | start no earlier than 2022-05-04 09:00 | 3D аниматор; Web-дизайнер; Ведущий программист; Мультимедиа-корреспондент; Системный аналитик; Художник-дизайнер; Технический писатель | 7h | 7h | 61 | 61 | 61 |
| 39 | 10.11 | Совещание 11 | manual | 1h | 2022-05-11 09:00 A | 2022-05-11 10:00 A | 100% |  | 2022-05-11 09:00 | 2022-05-11 10:00 | 1h |  | start no earlier than 2022-05-11 09:00 | 3D аниматор; Web-дизайнер; Ведущий программист; Мультимедиа-корреспондент; Системный аналитик; Художник-дизайнер; Технический писатель | 7h | 7h | 61 | 61 | 61 |
| 40 | 10.12 | Совещание 12 | manual | 1h | 2022-05-18 09:00 | 2022-05-18 10:00 |  |  | 2022-05-18 09:00 | 2022-05-18 10:00 | 1h |  | start no earlier than 2022-05-18 09:00 | 3D аниматор; Web-дизайнер; Ведущий программист; Мультимедиа-корреспондент; Системный аналитик; Художник-дизайнер; Технический писатель | 7h |  | 61 | 61 |  |
| 41 | 10.13 | Совещание 13 | manual | 1h | 2022-05-25 09:00 | 2022-05-25 10:00 |  |  | 2022-05-25 09:00 | 2022-05-25 10:00 | 1h |  | start no earlier than 2022-05-25 09:00 | 3D аниматор; Web-дизайнер; Ведущий программист; Мультимедиа-корреспондент; Системный аналитик; Художник-дизайнер; Технический писатель | 7h |  | 61 | 61 |  |
| 42 | 10.14 | Совещание 14 | manual | 1h | 2022-06-01 09:00 | 2022-06-01 10:00 |  |  | 2022-06-01 09:00 | 2022-06-01 10:00 | 1h |  | start no earlier than 2022-06-01 09:00 | 3D аниматор; Web-дизайнер; Ведущий программист; Мультимедиа-корреспондент; Системный аналитик; Художник-дизайнер; Технический писатель | 7h |  | 61 | 61 |  |
| 43 | 10.15 | Совещание 15 | manual | 1h | 2022-06-08 09:00 | 2022-06-08 10:00 |  |  | 2022-06-08 09:00 | 2022-06-08 10:00 | 1h |  | start no earlier than 2022-06-08 09:00 | 3D аниматор; Web-дизайнер; Ведущий программист; Мультимедиа-корреспондент; Системный аналитик; Художник-дизайнер; Технический писатель | 7h |  | 61 | 61 |  |
| 44 | 10.16 | Совещание 16 | manual | 1h | 2022-06-15 09:00 | 2022-06-15 10:00 |  |  | 2022-06-15 09:00 | 2022-06-15 10:00 | 1h |  | start no earlier than 2022-06-15 09:00 | 3D аниматор; Web-дизайнер; Ведущий программист; Мультимедиа-корреспондент; Системный аналитик; Художник-дизайнер; Технический писатель | 7h |  | 61 | 61 |  |
| 45 | 10.17 | Совещание 17 | manual | 1h | 2022-06-22 09:00 | 2022-06-22 10:00 |  |  | 2022-06-22 09:00 | 2022-06-22 10:00 | 1h |  | start no earlier than 2022-06-22 09:00 | 3D аниматор; Web-дизайнер; Ведущий программист; Мультимедиа-корреспондент; Системный аналитик; Художник-дизайнер; Технический писатель | 7h |  | 61 | 61 |  |
| 46 | 10.18 | Совещание 18 | manual | 1h | 2022-06-29 09:00 | 2022-06-29 10:00 |  |  | 2022-06-29 09:00 | 2022-06-29 10:00 | 1h |  | start no earlier than 2022-06-29 09:00 | 3D аниматор; Web-дизайнер; Ведущий программист; Мультимедиа-корреспондент; Системный аналитик; Художник-дизайнер; Технический писатель | 7h |  | 61 | 61 |  |
| 47 | 10.19 | Совещание 19 | manual | 1h | 2022-07-06 09:00 | 2022-07-06 10:00 |  |  | 2022-07-06 09:00 | 2022-07-06 10:00 | 1h |  | start no earlier than 2022-07-06 09:00 | 3D аниматор; Web-дизайнер; Ведущий программист; Мультимедиа-корреспондент; Системный аналитик; Художник-дизайнер; Технический писатель | 7h |  | 61 | 61 |  |
| 48 | 10.20 | Совещание 20 | manual | 1h | 2022-07-13 09:00 | 2022-07-13 10:00 |  |  | 2022-07-13 09:00 | 2022-07-13 10:00 | 1h |  | start no earlier than 2022-07-13 09:00 | 3D аниматор; Web-дизайнер; Ведущий программист; Мультимедиа-корреспондент; Системный аналитик; Художник-дизайнер; Технический писатель | 7h |  | 61 | 61 |  |
| 49 | 10.21 | Совещание 21 | manual | 1h | 2022-07-20 09:00 | 2022-07-20 10:00 |  |  | 2022-07-20 09:00 | 2022-07-20 10:00 | 1h |  | start no earlier than 2022-07-20 09:00 | 3D аниматор; Web-дизайнер; Ведущий программист; Мультимедиа-корреспондент; Системный аналитик; Художник-дизайнер; Технический писатель | 7h |  | 61 | 61 |  |
| 50 | 10.22 | Совещание 22 | manual | 1h | 2022-07-27 09:00 | 2022-07-27 10:00 |  |  | 2022-07-27 09:00 | 2022-07-27 10:00 | 1h |  | start no earlier than 2022-07-27 09:00 | 3D аниматор; Web-дизайнер; Ведущий программист; Мультимедиа-корреспондент; Системный аналитик; Художник-дизайнер; Технический писатель | 7h |  | 61 | 61 |  |
